# X01 website

How a schedule from MS Project changed from version to version. A marks actual dates.

## Version 1 (saved 2025-07-11)

Note of the change: feat: Update Product Requirements Document (PRD) for Project X01

| ID | WBS | Task | Duration | Start | Finish | Predecessors | Complete | Total float | Constraint |
| --- | --- | --- | --- | --- | --- | --- | --- | --- | --- |
| 1 | 1 | **X01 website** | 28d? | 2025-06-25 A | 2025-08-01 |  | 52% | 0d |  |
| 2 |  | Kickoff team | 1d | 2025-07-09 A | 2025-07-09 A |  | 100% |  |  |
| 3 | 1.2 | **Gather nhân sự cho team** | 1d | 2025-07-09 A | 2025-07-10 |  | 50% | 16.5d |  |
| 4 |  | Nhân sự BA, Dev, TO, Data lake | 0.5d | 2025-07-09 A | 2025-07-09 A |  | 100% |  | finish no earlier than 2025-07-09 |
| 5 | 1.2.2 | **Nhân sự Big data** | 0.5d | 2025-07-10 A | 2025-07-10 |  |  | 16.5d |  |
| 6 |  | Gửi email | 0.5d | 2025-07-10 A | 2025-07-10 |  |  | 16.5d | start no earlier than 2025-07-10 |
| 7 |  | Tiếp nhận thông tin | 0.5d | 2025-07-10 A | 2025-07-10 |  |  | 16.5d | start no earlier than 2025-07-10 |
| 8 |  | Lập mailing list | 0.5d | 2025-07-10 A | 2025-07-10 A |  | 100% |  | start no earlier than 2025-07-10 |
| 9 | 1.3 | **Giai đoạn phân tích, thiết kế** | 15d? | 2025-06-25 A | 2025-07-15 |  | 79% | 13d |  |
| 10 |  | Thiết lập ý tưởng | 4d? | 2025-06-25 A | 2025-06-30 A |  | 100% |  |  |
| 11 | 1.3.2 | **Xây dựng URD** | 12d | 2025-06-25 A | 2025-07-10 A |  | 100% |  |  |
| 12 |  | Workshop về nhu cầu | 1d | 2025-07-09 A | 2025-07-09 A |  | 100% |  |  |
| 13 |  | Dự thảo URD | 6d | 2025-06-25 A | 2025-07-02 A |  | 100% |  |  |
| 14 |  | Tham gia ý kiến | 1d | 2025-07-09 A | 2025-07-09 A |  | 100% |  |  |
| 15 |  | Hoàn thành URD | 1d | 2025-07-10 A | 2025-07-10 A | 14 | 100% |  |  |
| 16 | 1.3.3 | **Xây dựng SRS** | 4d | 2025-07-10 A | 2025-07-15 | 11 | 33% | 13d |  |
| 17 |  | Phân tích gap giữa URD & SRS | 1d | 2025-07-10 A | 2025-07-10 A |  | 100% |  |  |
| 18 | 1.3.3.2 | **Hoàn thiện SRS dựa trên gap đã phân tích** | 2d | 2025-07-11 A | 2025-07-14 | 17SS | 25% | 0d |  |
| 19 |  | Nghiệp vụ xử lý | 1d | 2025-07-11 A | 2025-07-11 |  |  |  |  |
| 20 |  | BA xử lý | 2d | 2025-07-11 A | 2025-07-14 |  |  |  |  |
| 21 |  | Dev xử lý | 1d | 2025-07-11 A | 2025-07-11 A |  | 100% |  |  |
| 22 |  | Hoàn thiện SRS | 1d | 2025-07-15 | 2025-07-15 | 18 |  | 13d |  |
| 23 | 1.4 | **Giai đoạn phát triển** | 15d? | 2025-07-14 A | 2025-08-01 |  |  | 0d |  |
| 24 |  | Workshop với nghiệp vụ, BA | 0.5d | 2025-07-14 A | 2025-07-14 |  |  |  |  |
| 25 |  | Lập kế hoạch phát triển (backlog tổng) & thứ tự ưu tiên & timeline | 0.5d | 2025-07-14 | 2025-07-14 | 24 |  | 14d |  |
| 26 | 1.4.3 | **Sprint 1** | 11d? | 2025-07-18 | 2025-08-01 |  |  | 0d |  |
| 27 |  | Planning | 0.5d | 2025-07-18 | 2025-07-18 |  |  |  |  |
| 28 | 1.4.3.2 | **Implement theo kế hoạch tuần 1** | 5d? | 2025-07-21 | 2025-07-25 |  |  |  |  |
| 29 |  | Ví dụ: Xây dựng CMS | 1d? | 2025-07-21 | 2025-07-21 |  |  |  |  |
| 30 |  | Ví dụ: Port frontend sang Angular | 1d? | 2025-07-21 | 2025-07-21 |  |  |  |  |
| 31 |  | Ví dụ: Xây dựng DB | 1d? | 2025-07-21 | 2025-07-21 |  |  |  |  |
| 32 |  | Ví dụ: Thu thập dữ liệu sáng kiến | 1d? | 2025-07-21 | 2025-07-21 |  |  |  |  |
| 33 |  | Mini Retro & Review 1 | 0.5d | 2025-07-25 | 2025-07-25 |  |  | 0.5d | start no earlier than 2025-07-25 |
| 34 | 1.4.3.4 | **Implement theo kế hoạch tuần 2** | 5d? | 2025-07-28 | 2025-08-01 | 33 |  |  |  |
| 35 |  | Ví dụ: Xây dựng CMS | 1d? | 2025-07-28 | 2025-07-28 |  |  |  |  |
| 36 |  | Ví dụ: Port frontend sang Angular | 1d? | 2025-07-28 | 2025-07-28 |  |  |  |  |
| 37 |  | Ví dụ: Xây dựng DB | 1d? | 2025-07-28 | 2025-07-28 |  |  |  |  |
| 38 |  | Ví dụ: Thu thập dữ liệu sáng kiến | 1d? | 2025-07-28 | 2025-07-28 |  |  |  |  |
| 39 |  | Retro, Review & Planning cho Sprint 2 | 1d | 2025-08-01 | 2025-08-01 |  |  |  |  |

## Version 2 (saved 2025-07-13)

Note of the change: addition to CMS design

Last finish stays 2025-08-01.

Changed:

| ID | Task | Complete |
| --- | --- | --- |
| 1 | **X01 website** | 52% → 68% |
